# rk

Schedule from MS Project, 2023-04-03 to 2023-06-28, status date 2023-06-03, costs in ₽, A marks actual dates.

## Calendars

- Стандартный: Mon-Fri 09:00-13:00, 14:00-18:00; Sat-Sun off. Exceptions (off unless hours are given): 2023-05-01 (Праздник Весны и Труда), 2023-05-08 to 2023-05-09 (День Победы), 2023-06-12 (День России).

## Resources

| Resource | Group | Unit | Rate | Cost per use | Notes |
| --- | --- | --- | --- | --- | --- |
| Соколов | Программисты |  | 437.5 |  | Ведущий программист |
| Соломин | Программисты |  | 343.75 |  |  |
| Тимофеев | Программисты |  | 312.5 |  |  |
| Яковлева | Программисты |  | 312.5 |  |  |
| Петров | Дизайнеры |  | 468.75 |  | Руководитель дизайнерской группы |
| Кузнецов | Дизайнеры |  | 312.5 |  |  |
| Фомина | Редактор сайта |  | 250 |  |  |
| Преподаватели | Преподаватели |  | 700 |  |  |
| Программное обеспечение | ПО |  | 30000 | 5000 |  |
| Картриджы для принтера | Расходные материалы |  | 2500 |  |  |
| Бумага |  | пач./мес. | 200 |  |  |

## Schedule

| ID | WBS | Task | Type | Duration | Start | Finish | Predecessors | Complete | Remaining | Baseline start | Baseline finish | Baseline duration | Total slack | Free slack | Constraint | Resources | Work | Actual work | Cost | Baseline cost | Actual cost |
| --- | --- | --- | --- | --- | --- | --- | --- | --- | --- | --- | --- | --- | --- | --- | --- | --- | --- | --- | --- | --- | --- |
| 1 | 1 | Начало проекта | milestone | 0d | 2023-04-03 A | 2023-04-03 A |  | 100% |  | 2023-04-03 | 2023-04-03 | 0d |  |  |  |  |  |  |  |  |  |
| 2 | 2 | Установка ПО |  | 16d | 2023-04-04 A | 2023-04-25 A | 1FS+1d | 100% |  | 2023-04-04 | 2023-04-24 | 15d |  |  |  | Программное обеспечение; Соколов | 120h | 120h | 87,500 | 87,500 | 87,500 |
| 3 | 3 | Обучение персонала |  | 21d | 2023-04-18 A | 2023-05-19 A | 2SS+10d | 100% |  | 2023-04-18 | 2023-05-23 | 22.14d |  |  | start no earlier than 2023-04-18 | Бумага [3 пач./мес.]; Картриджы для принтера; Кузнецов; Петров; Преподаватели [300%]; Соломин; Тимофеев; Яковлева; Соколов | 960h | 960h | 399,100 | 399,100 | 399,100 |
| 4 | 4 | **Разработка представительских сайтов** |  | 8d | 2023-05-30 A | 2023-06-09 | 3 | 52% | 3.84d | 2023-05-30 | 2023-06-09 | 8d | 12d | 0d |  |  | 88h | 45.71h | 28,500 | 26,000 | 14,775.42 |
| 5 | 4.1 | **Разработка сайта 1** |  | 5d | 2023-05-30 A | 2023-06-06 |  | 81% | 0.95d | 2023-05-30 | 2023-06-06 | 5d | 0d |  |  |  | 48h | 38.86h | 15,500 | 13,000 | 12,547.71 |
| 6 | 4.1.1 | Разработка дизайна сайта 1 |  | 3d | 2023-05-30 A | 2023-06-02 A |  | 100% |  | 2023-05-30 | 2023-06-01 | 2d |  |  |  | Кузнецов | 24h | 24h | 7,500 | 5,000 | 7,500 |
| 7 | 4.1.2 | Программирование сайта 1 |  | 3d | 2023-06-01 A | 2023-06-06 | 6 | 62% | 1.14d | 2023-06-01 | 2023-06-06 | 3d | 0d |  |  | Тимофеев | 24h | 14.86h | 7,500 | 7,500 | 4,642.71 |
| 8 | 4.2 | **Разработка сайта 2** |  | 5d | 2023-06-02 A | 2023-06-09 | 5FS-2d | 17% | 4.14d | 2023-06-02 | 2023-06-09 | 5d | 12d |  |  |  | 40h | 6.86h | 13,000 | 13,000 | 2,227.71 |
| 9 | 4.2.1 | Разработка дизайна сайта 2 |  | 2d | 2023-06-02 A | 2023-06-06 |  | 43% | 1.14d | 2023-06-02 | 2023-06-06 | 2d | 12d | 0d |  | Кузнецов | 16h | 6.86h | 5,000 | 5,000 | 2,142.71 |
| 10 | 4.2.2 | Программирование дизайна сайта 2 |  | 3d | 2023-06-06 | 2023-06-09 | 9 |  |  | 2023-06-06 | 2023-06-09 | 3d | 12d | 17d |  | Тимофеев | 24h |  | 7,500 | 7,500 |  |
| 11 | 5 | Представительские сайты созданы | milestone | 0d | 2023-06-09 | 2023-06-09 | 4 |  |  | 2023-06-09 | 2023-06-09 | 0d | 12d | 17d |  |  |  |  |  |  |  |
| 12 | 6 | **Разработка корпоративного сайта** |  | 25d | 2023-05-23 A | 2023-06-28 | 3 | 31% | 17.18d | 2023-05-23 | 2023-06-28 | 25d | 0d |  |  |  | 424h | 141.71h | 137,000 | 137,000 | 45,509.69 |
| 13 | 6.1 | Проектирование сайта |  | 4.86d | 2023-05-23 A | 2023-05-29 A |  | 100% |  | 2023-05-23 | 2023-05-30 | 5d |  |  |  | Кузнецов; Тимофеев | 80h | 80h | 25,000 | 25,000 | 25,000 |
| 14 | 6.2 | Программирование сайта |  | 15d | 2023-05-30 A | 2023-06-21 | 13 | 26% | 11.14d | 2023-05-30 | 2023-06-21 | 15d | 0d |  |  | Соломин; Яковлева | 240h | 61.71h | 79,750 | 79,750 | 20,509.69 |
| 15 | 6.3 | Наполнение сайта |  | 3d | 2023-06-16 | 2023-06-21 | 14FS-3d |  |  | 2023-06-16 | 2023-06-21 | 3d | 0d |  |  | Фомина | 24h |  | 6,000 | 6,000 |  |
| 16 | 6.4 | Тестирование сайта |  | 5d | 2023-06-21 | 2023-06-28 | 15 |  |  | 2023-06-21 | 2023-06-28 | 5d | 0d |  |  | Соломин; Яковлева | 80h |  | 26,250 | 26,250 |  |
| 17 | 7 | Сдача сайта заказчику | milestone | 0d | 2023-06-28 | 2023-06-28 | 16 |  |  | 2023-06-28 | 2023-06-28 | 0d | 0d |  |  |  |  |  |  |  |  |
